# 软件开发

Schedule from MS Project, 2015-09-21 to 2015-11-09.

## Calendars

- 标准: Mon-Fri 08:00-12:00, 13:00-17:00; Sat-Sun off.

## Resources

| Resource |
| --- |
| 项目开发小组 |
| 宋玉良 |
| 李静 |
| 徐珩翔 |
| 赵建国 |
| 培训人员 |
| 周海军 |
| 邓远文 |

## Schedule

| ID | WBS | Task | Type | Duration | Start | Finish | Predecessors | Total slack | Constraint | Resources | Work |
| --- | --- | --- | --- | --- | --- | --- | --- | --- | --- | --- | --- |
| 1 | 1 | **项目选题和项目小组成员技术评估** |  | 1.5d | 2015-09-21 | 2015-09-22 |  | 0d |  |  | 12h |
| 2 | 1.1 | 确定项目范围 |  | 4h | 2015-09-21 | 2015-09-21 |  | 0d | finish no earlier than 2015-09-21 | 项目开发小组 | 4h |
| 3 | 1.2 | 小组成员技术发展规划 |  | 0.5d | 2015-09-22 | 2015-09-22 | 2 | 0d |  | 项目开发小组 | 4h |
| 4 | 1.3 | 获取所需要的项目学习资源 |  | 0.5d | 2015-09-22 | 2015-09-22 | 3 | 0d |  | 邓远文 | 4h |
| 5 | 2 | **人力资源管理系统需求分析** |  | 3.5d | 2015-09-23 | 2015-09-28 |  | 0d |  |  | 52h |
| 6 | 2.1 | 行为需求分析 |  | 1d | 2015-09-23 | 2015-09-23 | 4 | 0d |  | 李静; 赵建国; 周海军 | 24h |
| 7 | 2.2 | 起草初步的软件需求分析文档 |  | 1d | 2015-09-24 | 2015-09-24 | 6 | 0d |  | 项目开发小组 | 8h |
| 8 | 2.3 | 工作组共同审阅软件需求分析文档 |  | 4h | 2015-09-25 | 2015-09-25 | 7 | 0d |  | 宋玉良; 李静 | 8h |
| 9 | 2.4 | 根据反馈修改软件需求文档 |  | 0.5d | 2015-09-25 | 2015-09-25 | 8 | 0d |  | 李静; 徐珩翔 | 8h |
| 10 | 2.5 | 确定交付期限 |  | 0.5d | 2015-09-28 | 2015-09-28 | 9 | 0d |  | 邓远文 | 4h |
| 11 | 2.6 | 分析工作完成 | milestone | 0d | 2015-09-28 | 2015-09-28 | 10 | 0d |  |  |  |
| 12 | 3 | **人力资源管理系统设计** |  | 2.62d | 2015-09-28 | 2015-10-01 |  | 0d |  |  | 109h |
| 13 | 3.1 | 审阅的软件需求分析文档 |  | 1d | 2015-09-28 | 2015-09-29 | 11 | 43.25d |  | 邓远文 | 8h |
| 14 | 3.2 | 系统概要设计 |  | 2d | 2015-09-28 | 2015-09-30 | 11 | 42.25d |  | 宋玉良; 赵建国 | 32h |
| 15 | 3.3 | 系统详细设计 |  | 2d | 2015-09-28 | 2015-09-30 | 11 | 42.25d |  | 李静; 邓远文 | 32h |
| 16 | 3.4 | 系统数据库设计 |  | 2d | 2015-09-28 | 2015-09-30 | 11 | 0d |  | 徐珩翔; 周海军 | 32h |
| 17 | 3.5 | 系统设计评审 |  | 0.5d | 2015-09-30 | 2015-09-30 | 16 | 0d |  | 项目开发小组 | 4h |
| 18 | 3.6 | 获得开展后续工作的批准 |  | 1h | 2015-10-01 | 2015-10-01 | 17 | 0d |  | 邓远文 | 1h |
| 19 | 3.7 | 设计工作完成 | milestone | 0d | 2015-10-01 | 2015-10-01 | 18 | 0d |  |  |  |
| 20 | 4 | **人力资源管理系统软件开发** |  | 17.5d | 2015-10-01 | 2015-10-26 |  | 0d |  |  | 184h |
| 21 | 4.1 | 审阅功能规范 |  | 1d | 2015-10-01 | 2015-10-02 | 19 | 0d |  | 项目开发小组 | 8h |
| 22 | 4.2 | 确定模块化/分层设计参数 |  | 0.5d | 2015-10-02 | 2015-10-02 | 21 | 0d |  | 徐珩翔; 邓远文 | 8h |
| 23 | 4.3 | 分派任务给开发人员 |  | 1d | 2015-10-02 | 2015-10-05 | 22 | 0d |  | 邓远文 | 8h |
| 24 | 4.4 | 编写代码 |  | 15d | 2015-10-05 | 2015-10-26 | 23 | 0d |  | 项目开发小组 | 120h |
| 25 | 4.5 | 开发人员测试(初步调试) |  | 5d | 2015-10-09 | 2015-10-16 | 24FS-7.5% | 0d |  | 项目开发小组 | 40h |
| 26 | 4.6 | 开发工作完毕 | milestone | 0d | 2015-10-16 | 2015-10-16 | 25 | 0d |  |  |  |

| ID | WBS | Task | Type | Duration | Start | Finish | Predecessors | Total slack | Free slack | Resources | Work |
| --- | --- | --- | --- | --- | --- | --- | --- | --- | --- | --- | --- |
| 27 | 5 | **人力资源管理系统测试** |  | 27.25d | 2015-10-01 | 2015-11-09 |  | 0d |  |  | 256h |
| 28 | 5.1 | 根据产品规范制定单元测试计划 |  | 4d | 2015-10-01 | 2015-10-07 | 19 | 7.25d |  | 项目开发小组 | 32h |
| 29 | 5.2 | 根据产品规范制定整体测试计划 |  | 4d | 2015-10-01 | 2015-10-07 | 19 | 23.25d |  | 邓远文 | 32h |
| 30 | 5.3 | **单元测试** |  | 8d | 2015-10-16 | 2015-10-28 |  | 0d |  |  | 96h |
| 31 | 5.3.1 | 审阅模块化代码 |  | 2d | 2015-10-16 | 2015-10-20 | 28, 26 | 0d |  | 邓远文 | 16h |
| 32 | 5.3.2 | 测试组件模块是否符合产品规范 |  | 0.4d | 2015-10-20 | 2015-10-20 | 26, 31 | 0d |  | 赵建国; 李静; 宋玉良; 徐珩翔; 周海军 | 16h |
| 33 | 5.3.3 | 找出不符合产品规范的异常情况 |  | 0.6d | 2015-10-20 | 2015-10-21 | 32 | 0d |  | 赵建国; 李静; 宋玉良; 徐珩翔; 周海军 | 24h |
| 34 | 5.3.4 | 修改代码 |  | 3d | 2015-10-21 | 2015-10-26 | 33 | 0d |  | 项目开发小组 | 24h |
| 35 | 5.3.5 | 重新测试经过修改的代码 |  | 2d | 2015-10-26 | 2015-10-28 | 34 | 0d |  | 项目开发小组 | 16h |
| 36 | 5.3.6 | 单元测试完成 | milestone | 0d | 2015-10-28 | 2015-10-28 | 35 | 0d |  |  |  |
| 37 | 5.4 | **整体测试** |  | 8d | 2015-10-28 | 2015-11-09 |  | 0d |  |  | 96h |
| 38 | 5.4.1 | 测试模块集成情况 |  | 2.5d | 2015-10-28 | 2015-10-30 | 36 | 0d |  | 邓远文; 徐珩翔 | 40h |
| 39 | 5.4.2 | 找出不符合规范的异常情况 |  | 0.5d | 2015-10-30 | 2015-11-02 | 38 | 0d |  | 赵建国; 李静; 宋玉良; 周海军 | 16h |
| 40 | 5.4.3 | 修改代码 |  | 3d | 2015-11-02 | 2015-11-05 | 39 | 0d |  | 项目开发小组 | 24h |
| 41 | 5.4.4 | 重新测试经过修改的代码 |  | 2d | 2015-11-05 | 2015-11-09 | 40 | 0d |  | 项目开发小组 | 16h |
| 42 | 5.4.5 | 整体测试完成 | milestone | 0d | 2015-11-09 | 2015-11-09 | 41 | 0d |  |  |  |
| 43 | 6 | **文档** |  | 20.17d | 2015-10-01 | 2015-10-29 |  | 7.08d |  |  | 168h |
| 44 | 6.1 | 制定用户手册规范 |  | 1d | 2015-10-01 | 2015-10-02 | 19 | 16.08d | 9d | 周海军; 宋玉良 | 16h |
| 45 | 6.2 | 编写用户手册 |  | 1.5w | 2015-10-15 | 2015-10-26 | 44, 24FS-5% | 7.08d | 0d | 周海军; 李静 | 120h |
| 46 | 6.3 | 审阅所有的用户文档 |  | 2d | 2015-10-26 | 2015-10-28 | 45 | 7.08d | 0d | 邓远文 | 16h |
| 47 | 6.4 | 根据反馈修改用户文档 |  | 0.67d | 2015-10-28 | 2015-10-29 | 46 | 7.08d | 0d | 周海军; 李静; 赵建国 | 16h |
| 48 | 6.5 | 文档完成 | milestone | 0d | 2015-10-29 | 2015-10-29 | 47 | 7.08d |  |  |  |
